# caGrid-1-3

Schedule from MS Project, 2008-07-17 to 2008-07-31, A marks actual dates.
Personal

## Calendars

- Standard: Mon-Fri 08:00-12:00, 13:00-17:00; Sat-Sun off.

## Resources

| Resource |
| --- |
| Scott Oster |
| Steve Langella |
| Shannon Hastings |
| David Ervin |
| Santhosh Garmilla |
| John Eisenschmidt |
| Knowledge Center |
| Carolyn Klinger |
| Quality Assurance |
| Systems |

## Schedule

| ID | WBS | Task | Type | Duration | Start | Finish | Predecessors | Total slack | Free slack | Resources | Work |
| --- | --- | --- | --- | --- | --- | --- | --- | --- | --- | --- | --- |
| 1 | 1.0 | **Gold Compatibility** |  | 1d? | 2008-07-17 | 2008-07-17 |  | 9d |  |  | 112h |
| 2 | 1.1 | **GME Rewrite** |  | 1d? | 2008-07-17 | 2008-07-17 |  | 9d |  | Scott Oster [50%] | 40h |
| 3 | 1.1.0 | Start | milestone | 0d | 2008-07-17 | 2008-07-17 |  | 9d | 0d | Scott Oster [50%] |  |
| 4 | 1.1.1 | MySQL 5.0 Support |  | 1d? | 2008-07-17 | 2008-07-17 | 3 | 9d | 0d | Scott Oster [50%] | 4h |
| 5 | 1.1.3 | Schemas with Cycles |  | 1d? | 2008-07-17 | 2008-07-17 | 3 | 9d | 0d | Scott Oster [50%] | 4h |
| 6 | 1.1.4 | Schemas with Includes/Redefines |  | 1d? | 2008-07-17 | 2008-07-17 | 3 | 9d | 0d | Scott Oster [50%] | 4h |
| 7 | 1.1.5 | URI Valid as Namespace |  | 1d? | 2008-07-17 | 2008-07-17 | 3 | 9d | 0d | Scott Oster [50%] | 4h |
| 8 | 1.1.6 | Metadata and WSDL reflect service operations |  | 1d? | 2008-07-17 | 2008-07-17 | 3 | 9d | 0d | Scott Oster [50%] | 4h |
| 9 | 1.1.7 | Update/Delete non-production schemas |  | 1d? | 2008-07-17 | 2008-07-17 | 3 | 9d | 0d | Scott Oster [50%] | 4h |
| 10 | 1.1.8 | Associate Arbitrarty Metadata or Annotations |  | 1d? | 2008-07-17 | 2008-07-17 | 3 | 9d | 0d | Scott Oster [50%] | 4h |
| 11 | 1.1.9 | Validate that XML conforms to schema in GME |  | 1d? | 2008-07-17 | 2008-07-17 | 3 | 9d | 0d | Scott Oster [50%] | 4h |
| 12 | 1.1.10 | Non-RFE Development |  | 1d? | 2008-07-17 | 2008-07-17 | 3 | 9d | 0d | Scott Oster [50%] | 4h |
| 13 | 1.1.11 | Finish | milestone | 0d | 2008-07-17 | 2008-07-17 | 4, 5, 6, 7, 8, 9, 10, 11, 12 | 9d | 0d | Scott Oster [50%] |  |
| 14 | 1.2 | **caDSR Grid Service Replacement** |  | 1d? | 2008-07-17 | 2008-07-17 |  | 9d |  | Scott Oster [50%] | 20h |
| 15 | 1.2.1 | Start | milestone | 0d | 2008-07-17 | 2008-07-17 |  | 9d | 0d | Scott Oster [50%] |  |
| 16 | 1.2.2 | Design |  | 1d? | 2008-07-17 | 2008-07-17 | 15 | 9d | 0d | Scott Oster [50%] | 4h |
| 17 | 1.2.3 | Development |  | 1d? | 2008-07-17 | 2008-07-17 | 15 | 9d | 0d | Scott Oster [50%] | 4h |
| 18 | 1.2.4 | Migration of code depenedencies on caDSR grid service (Introduce extensions) |  | 1d? | 2008-07-17 | 2008-07-17 |  | 10d |  | Scott Oster [50%] | 4h |
| 19 | 1.2.4 | Developer Testing |  | 1d? | 2008-07-17 | 2008-07-17 | 15 | 9d | 0d | Scott Oster [50%] | 4h |
| 20 | 1.2.5 | Finish | milestone | 0d | 2008-07-17 | 2008-07-17 | 16, 17, 19 | 9d | 0d | Scott Oster [50%] |  |
| 21 | 1.3 | **Make Core Services Gold Compatible** |  | 1d? | 2008-07-17 | 2008-07-17 |  | 10d |  |  | 52h |
| 22 | 1.3.1 | Start | milestone | 0d | 2008-07-17 | 2008-07-17 |  | 10d | 0d |  |  |
| 23 | 1.3.2 | Identify Services to be made Gold Compatible |  | 1d? | 2008-07-17 | 2008-07-17 | 22 | 10d | 0d | Scott Oster [50%] | 4h |
| 24 | 1.3.3 | **Register Object and Metadata Models** |  | 1d? | 2008-07-17 | 2008-07-17 |  | 10d |  | John Eisenschmidt | 48h |
| 25 | 1.3.3.1 | Start | milestone | 0d | 2008-07-17 | 2008-07-17 | 22 | 10d | 0d | John Eisenschmidt |  |
| 26 | 1.3.3.2 | CQL |  | 1d? | 2008-07-17 | 2008-07-17 | 25 | 10d | 0d | John Eisenschmidt | 8h |
| 27 | 1.3.3.3 | CQL Results |  | 1d? | 2008-07-17 | 2008-07-17 | 25 | 10d | 0d | John Eisenschmidt | 8h |
| 28 | 1.3.3.4 | Service Metadata |  | 1d? | 2008-07-17 | 2008-07-17 | 25 | 10d | 0d | John Eisenschmidt | 8h |
| 29 | 1.3.3.5 | Security Metadata |  | 1d? | 2008-07-17 | 2008-07-17 | 25 | 10d | 0d | John Eisenschmidt | 8h |
| 30 | 1.3.3.6 | Data Services Object Model |  | 1d? | 2008-07-17 | 2008-07-17 | 25 | 10d | 0d | John Eisenschmidt | 8h |
| 31 | 1.3.3.7 | Finish | milestone | 0d | 2008-07-17 | 2008-07-17 | 26, 27, 28, 29, 30 | 10d | 0d | John Eisenschmidt |  |
| 32 | 1.3.4 | Finish | milestone | 0d | 2008-07-17 | 2008-07-17 | 23, 31 | 10d |  |  |  |

Notes:
- 18: This creates a backwards incompatibility for existing Introduce installations which would expect to be able to communicate with the existing caDSR grid service; we should leave this instance running, and deprecate it (if ncessary, we can create new versions of these extensions for past releases of Introduce if necessary.
- 21: caGrid 1.3 should focus on non-backwards compatibility issues (not refactoring service interfaces); I will create a detailed wbs for this sepecifically

| ID | WBS | Task | Type | Duration | Start | Finish | Predecessors | Complete | Remaining | Total slack | Free slack | Resources | Work | Actual work |
| --- | --- | --- | --- | --- | --- | --- | --- | --- | --- | --- | --- | --- | --- | --- |
| 33 | 1.4 | **Grid-based Policy Enforcement** |  | 1d? | 2008-07-17 | 2008-07-17 |  |  |  | 10d |  |  |  |  |
| 34 | 1.4.1 | Start | milestone | 0d | 2008-07-17 | 2008-07-17 |  |  |  | 10d | 0d |  |  |  |
| 35 | 1.4.2 | Determine Policy to be enforced |  | 1d? | 2008-07-17 | 2008-07-17 | 34 |  |  | 10d | 0d |  |  |  |
| 36 | 1.4.3 | Design |  | 1d? | 2008-07-17 | 2008-07-17 | 34 |  |  | 10d | 0d |  |  |  |
| 37 | 1.4.4 | Development |  | 1d? | 2008-07-17 | 2008-07-17 | 34 |  |  | 10d | 0d |  |  |  |
| 38 | 1.4.5 | Finish | milestone | 0d | 2008-07-17 | 2008-07-17 | 37, 35, 36 |  |  | 10d |  |  |  |  |
| 39 | 2.0 | **caCORE Integration** |  | 1d? | 2008-07-17 | 2008-07-17 |  |  |  | 10d |  |  | 56h |  |
| 40 | 2.1 | Start | milestone | 0d | 2008-07-17 | 2008-07-17 |  |  |  | 10d | 0d |  |  |  |
| 41 | 2.2 | Implementation of Common Testing between Grid and SDK |  | 1d? | 2008-07-17 | 2008-07-17 | 40 |  |  | 10d | 0d | David Ervin | 8h |  |
| 42 | 2.3 | Identify modeling gaps/requirements for the analytical/data service |  | 1d? | 2008-07-17 | 2008-07-17 | 40 |  |  | 10d | 0d | David Ervin | 8h |  |
| 43 | 2.4 | CQL/CQL2 Integration in SDK |  | 1d? | 2008-07-17 | 2008-07-17 | 40 |  |  | 10d | 0d | David Ervin | 8h |  |
| 44 | 2.5 | Data Service plug-in for SDK 4.1 |  | 1d? | 2008-07-17 | 2008-07-17 | 40 |  |  | 10d | 0d | David Ervin | 8h |  |
| 45 | 2.6 | Introduce upgrade to SDK 4.1 |  | 1d? | 2008-07-17 | 2008-07-17 | 40 |  |  | 10d | 0d | Shannon Hastings | 8h |  |
| 46 | 2.7 | Proxy Framework and XML serialization integration in Grid Service |  | 1d? | 2008-07-17 | 2008-07-17 | 40 |  |  | 10d | 0d | Shannon Hastings | 8h |  |
| 47 | 2.8 | XMI Reader API Integration in Introduce |  | 1d? | 2008-07-17 | 2008-07-17 | 40 |  |  | 10d | 0d | Shannon Hastings | 8h |  |
| 48 | 2.9 | Finish | milestone | 0d | 2008-07-17 | 2008-07-17 | 41, 42, 43, 44, 45, 46, 47 |  |  | 10d |  |  |  |  |
| 49 | 3.0 | **Bug Fixes** |  | 1d? | 2008-07-17 A | 2008-07-17 |  | 4% | 0.95d? | 10d |  |  | 176h | 8h |
| 50 | 3.1 | Start | milestone | 0d | 2008-07-17 | 2008-07-17 |  |  |  | 10d | 0d |  |  |  |
| 51 | 3.2 | SDK 4 data service wizard fails with 'No Domain Model' |  | 1d? | 2008-07-17 | 2008-07-17 | 50 |  |  | 10d | 0d | David Ervin | 8h |  |
| 52 | 3.3 | When the trasfer resource is being destroyed it tries to delete the cache file. If the cache files does not exist it throws a resource exception. |  | 1d? | 2008-07-17 | 2008-07-17 | 50 |  |  | 10d | 0d | Shannon Hastings | 8h |  |
| 53 | 3.4 | 2 >= 2 error in GridGrouper my groups |  | 1d? | 2008-07-17 | 2008-07-17 | 50 |  |  | 10d | 0d | Steve Langella | 8h |  |
| 54 | 3.5 | Introduce is not passing any system properties on to it's ant calls it makes when running the engine. |  | 1d? | 2008-07-17 | 2008-07-17 | 50 |  |  | 10d | 0d | Shannon Hastings | 8h |  |
| 55 | 3.6 | caDSR Grid Service API does not provide access to semantic metadata (concept codes) |  | 1d? | 2008-07-17 | 2008-07-17 | 50 |  |  | 10d | 0d | Scott Oster [50%] | 4h |  |
| 56 | 3.7 | Security Service Metadata Anonymous Clients Ignored in Grid Grouper |  | 1d? | 2008-07-17 | 2008-07-17 | 50 |  |  | 10d | 0d | Steve Langella | 8h |  |
| 57 | 3.8 | caCORE backed data services don't handle queries with single quotes in query parameters |  | 1d? | 2008-07-17 A | 2008-07-17 A | 50 | 100% |  |  |  | David Ervin | 8h | 8h |
| 58 | 3.9 | caDSR Type Browser doesn't let you correct a namespace that is invalid (as opposed to not found) |  | 1d? | 2008-07-17 | 2008-07-17 | 50 |  |  | 10d | 0d | Scott Oster [50%] | 4h |  |
| 59 | 3.10 | DataService gets in inconsistent state and returns confusing errors when not properly initialized |  | 1d? | 2008-07-17 | 2008-07-17 | 50 |  |  | 10d | 0d | David Ervin | 8h |  |
| 60 | 3.11 | Grid Grouper Authorization not configured but service can be deployed |  | 1d? | 2008-07-17 | 2008-07-17 | 50 |  |  | 10d | 0d | Steve Langella | 8h |  |
| 61 | 3.12 | Introduce error importing Type schemas it generated. |  | 1d? | 2008-07-17 | 2008-07-17 | 50 |  |  | 10d | 0d | Shannon Hastings | 8h |  |
| 62 | 3.13 | GTS does not remove permissions when a CA is deleted. |  | 1d? | 2008-07-17 | 2008-07-17 | 50 |  |  | 10d | 0d | Steve Langella | 8h |  |
| 63 | 3.14 | Spaces in GLOBUS_LOCATION causing errors on deployment for Introduce created services |  | 1d? | 2008-07-17 | 2008-07-17 | 50 |  |  | 10d | 0d | Shannon Hastings | 8h |  |
| 64 | 3.15 | When importing a method from another introduce service package names are broken |  | 1d? | 2008-07-17 | 2008-07-17 | 50 |  |  | 10d | 0d | Shannon Hastings | 8h |  |
| 65 | 3.16 | SyncGTS is an Introduce 1.1 service will conflict with a container running newer services. |  | 1d? | 2008-07-17 | 2008-07-17 | 50 |  |  | 10d | 0d | Steve Langella | 8h |  |
| 66 | 3.17 | Lowercase chars in complexType names from schema can cause compile failure |  | 1d? | 2008-07-17 | 2008-07-17 | 50 |  |  | 10d | 0d | John Eisenschmidt | 8h |  |
| 67 | 3.18 | caGrid authentication service authentications fail after change of password on NCI LDAP |  | 1d? | 2008-07-17 | 2008-07-17 | 50 |  |  | 10d | 0d | Steve Langella | 8h |  |
| 68 | 3.19 | SyncGTS is using log4j directly instead of commons logging which causes some logging statements to not be shown in Tomcat |  | 1d? | 2008-07-17 | 2008-07-17 | 50 |  |  | 10d | 0d | Steve Langella | 8h |  |
| 69 | 3.20 | Remove references to log4j in projects and only use commons logging |  | 0.29d? | 2008-07-17 | 2008-07-17 | 50 |  |  | 10.71d | 0.71d | Steve Langella; Scott Oster [50%]; Shannon Hastings; David Ervin | 8h |  |
| 70 | 3.21 | Multiple services using WS-Enumeration cannot run in same container |  | 1d? | 2008-07-17 | 2008-07-17 | 50 |  |  | 10d | 0d | Shannon Hastings | 8h |  |
| 71 | 3.22 | Introduce configure types validator lets you save when there are validation errors |  | 1d? | 2008-07-17 | 2008-07-17 | 50 |  |  | 10d | 0d | Shannon Hastings | 8h |  |
| 72 | 3.23 | Subject in Dorian limited to 255 characters |  | 1d? | 2008-07-17 | 2008-07-17 | 50 |  |  | 10d | 0d | Steve Langella | 8h |  |
| 73 | 3.24 | Introduce Log Viewer hangs in certain scenarios |  | 1d? | 2008-07-17 | 2008-07-17 | 50 |  |  | 10d | 0d | Shannon Hastings | 8h |  |
| 74 | 3.25 | Finish | milestone | 0d | 2008-07-17 | 2008-07-17 | 51, 52, 53, 54, 55, 56, 57, 58, 59, 60, 61, 62, 63, 64, 65, 66, 67, 68, 69, 70, 71, 72, 73 |  |  | 10d |  |  |  |  |

Notes:
- 33: This is a risk item as we can't do anything until policy is defined, and there is no timeline for this, and its out of the caGrid team's control
- 46: This is a low priority and we might want to bump it
- 55: This is really a "missing feature" and should/would be satisfied be the new caDSR grid service / This is already referenced above in 1.2.2, just pointing it out explicitly.
- 57: I updated the tracker; this is a limitation which can't be fixed for caCORE SDK 3.1 and 3.2(.1), but was addressed in caGrid 1.2 when adding support for caCORE SDK 4.0. Should we close the bug?
- 66: This is something we can't fix; should we close the bug?

| ID | WBS | Task | Type | Duration | Start | Finish | Predecessors | Complete | Remaining | Total slack | Free slack | Resources | Work | Actual work |
| --- | --- | --- | --- | --- | --- | --- | --- | --- | --- | --- | --- | --- | --- | --- |
| 75 | 4.0 | **WebSSO** |  | 1d? | 2008-07-17 A | 2008-07-17 |  | 50% | 0.5d? | 9d |  |  | 48h | 24h |
| 76 | 4.1 | Start | milestone | 0d | 2008-07-17 | 2008-07-17 |  |  |  | 9d | 0d |  |  |  |
| 77 | 4.2 | Properties not set for service redirect/cookie age within the cas-servlet.xml file |  | 1d? | 2008-07-17 A | 2008-07-17 A | 76 | 100% |  |  |  | Santhosh Garmilla [50%] | 4h | 4h |
| 78 | 4.3 | CaGridWebSSOAttributeLoaderFilter will not work as designed |  | 1d? | 2008-07-17 A | 2008-07-17 A | 76 | 100% |  |  |  | Santhosh Garmilla [50%] | 4h | 4h |
| 79 | 4.4 | WebSSO project is missing jar dependencies for syncGTS |  | 1d? | 2008-07-17 A | 2008-07-17 A | 76 | 100% |  |  |  | Santhosh Garmilla [50%] | 4h | 4h |
| 80 | 4.5 | classnotfoundexception when deploying to tomcat 5.5+ |  | 1d? | 2008-07-17 A | 2008-07-17 A | 76 | 100% |  |  |  | Santhosh Garmilla [50%] | 4h | 4h |
| 81 | 4.6 | Update Build Process |  | 1d? | 2008-07-17 | 2008-07-17 | 76 |  |  | 9d | 0d | Santhosh Garmilla [50%] | 4h |  |
| 82 | 4.7 | Update the Sample Application |  | 1d? | 2008-07-17 A | 2008-07-17 A | 76 | 100% |  |  |  | Santhosh Garmilla [50%] | 4h | 4h |
| 83 | 4.8 | Create an Installer |  | 1d? | 2008-07-17 | 2008-07-17 | 76 |  |  | 9d | 0d | Santhosh Garmilla [50%] | 4h |  |
| 84 | 4.9 | Author System Tests for WebSSO |  | 1d? | 2008-07-17 | 2008-07-17 | 76 |  |  | 9d | 0d | Santhosh Garmilla [50%] | 4h |  |
| 85 | 4.10 | Acegi client |  | 1d? | 2008-07-17 | 2008-07-17 | 76 |  |  | 9d | 0d | Santhosh Garmilla [50%] | 4h |  |
| 86 | 4.11 | Single sign-out |  | 1d? | 2008-07-17 A | 2008-07-17 A | 76 | 100% |  |  |  | Santhosh Garmilla [50%] | 4h | 4h |
| 87 | 4.12 | Support out-of-box integration with Liferay (caGrid Portal 2.x) |  | 1d? | 2008-07-17 | 2008-07-17 | 76 |  |  | 9d | 0d | Santhosh Garmilla [50%] | 4h |  |
| 88 | 4.13 | Enhance existing documentation |  | 1d? | 2008-07-17 | 2008-07-17 | 76 |  |  | 9d | 0d | Santhosh Garmilla [50%] | 4h |  |
| 89 | 4.14 | Finish | milestone | 0d | 2008-07-17 | 2008-07-17 | 78, 79, 80, 81, 82, 83, 84, 85, 86, 87, 88, 77 |  |  | 9d | 0d |  |  |  |
| 90 | 5.0 | **Continuous Integration** |  | 1d? | 2008-07-17 | 2008-07-17 |  |  |  | 9d |  |  | 48h |  |
| 91 | 5.1 | Start | milestone | 0d | 2008-07-17 | 2008-07-17 |  |  |  | 9d | 0d |  |  |  |
| 92 | 5.3 | Support common technology stack for caGrid infrastructure |  | 1d? | 2008-07-17 | 2008-07-17 | 91 |  |  | 10d | 0d | Knowledge Center | 8h |  |
| 93 | 5.3 | **Update installer** |  | 1d? | 2008-07-17 | 2008-07-17 |  |  |  | 10d |  |  | 12h |  |
| 94 | 5.3.1 | integrate latest portal release |  | 1d? | 2008-07-17 | 2008-07-17 |  |  |  | 10d |  | Scott Oster [50%] | 4h |  |
| 95 | 5.3.2 | integrate WF client release? |  | 1d? | 2008-07-17 | 2008-07-17 |  |  |  | 10d |  | Scott Oster [50%] | 4h |  |
| 96 | 5.3.3 | updates for tech stack (tomcat versions, etc) |  | 1d? | 2008-07-17 | 2008-07-17 |  |  |  | 10d |  | Scott Oster [50%] | 4h |  |
| 97 | 5.4 | Replace cvs with subversion |  | 1d? | 2008-07-17 | 2008-07-17 | 91 |  |  | 9d | 0d | Knowledge Center | 8h |  |
| 98 | 5.5 | Common caBIG Ivy Repository |  | 1d? | 2008-07-17 | 2008-07-17 | 91 |  |  | 10d | 0d | Knowledge Center; Scott Oster [50%] | 12h |  |
| 99 | 5.6 | Remove old EVS grid service |  | 1d? | 2008-07-17 | 2008-07-17 | 91 |  |  | 10d | 0d | Scott Oster [50%] | 4h |  |
| 100 | 5.7 | Remove old caDSR grid service |  | 1d? | 2008-07-17 | 2008-07-17 | 91 |  |  | 10d | 0d | Scott Oster [50%] | 4h |  |
| 101 | 5.8 | Finish | milestone | 0d | 2008-07-17 | 2008-07-17 | 92, 97, 100, 98, 99 |  |  | 10d |  |  |  |  |

Notes:
- 83: We should discuss the scope of this.

| ID | WBS | Task | Type | Duration | Start | Finish | Predecessors | Total slack | Free slack | Resources | Work |
| --- | --- | --- | --- | --- | --- | --- | --- | --- | --- | --- | --- |
| 102 | 6.0 | **Data Services** |  | 1d? | 2008-07-17 | 2008-07-17 |  | 9d |  |  | 51.2h |
| 103 | 6.1 | Start | milestone | 0d | 2008-07-17 | 2008-07-17 |  | 9d | 0d |  |  |
| 104 | 6.2 | CQL/CQL2 Integration in SDK |  | 1d? | 2008-07-17 | 2008-07-17 | 103 | 9d | 0d | David Ervin [80%] | 6.4h |
| 105 | 6.3 | FQP should support delegation |  | 1d? | 2008-07-17 | 2008-07-17 | 103 | 9d | 0d | David Ervin [80%] | 6.4h |
| 106 | 6.4 | FQP should support BDT transfer of results |  | 1d? | 2008-07-17 | 2008-07-17 | 103 | 9d | 0d | David Ervin [80%] | 6.4h |
| 107 | 6.5 | FQP should support ws-notification |  | 1d? | 2008-07-17 | 2008-07-17 | 103 | 9d | 0d | David Ervin [80%] | 6.4h |
| 108 | 6.6 | DCQL fails when some target services are down |  | 1d? | 2008-07-17 | 2008-07-17 |  | 10d |  | David Ervin [80%] | 6.4h |
| 109 | 6.7 | DCQL (FQP) should support query modifiers |  | 1d? | 2008-07-17 | 2008-07-17 | 103 | 9d | 0d | David Ervin [80%] | 6.4h |
| 110 | 6.8 | Add additional utilities for working with query results |  | 1d? | 2008-07-17 | 2008-07-17 | 103 | 9d | 0d | David Ervin [80%] | 6.4h |
| 111 | 6.9 | silent exceptions (no service properties from custom query processor) when adding a custom query processor using Introduce data extension |  | 1d? | 2008-07-17 | 2008-07-17 | 103 | 9d | 0d | David Ervin [80%] | 6.4h |
| 112 | 6.10 | Finish | milestone | 0d | 2008-07-17 | 2008-07-17 | 104, 105, 106, 107, 109, 110, 111 | 9d | 0d |  |  |
| 113 | 7.0 | **Introduce** |  | 1d? | 2008-07-17 | 2008-07-17 |  | 7d |  |  | 108.8h |
| 114 | 7.1 | Start | milestone | 0d | 2008-07-17 | 2008-07-17 |  | 3d | 0d |  |  |
| 115 | 7.2 | Grid Grouper Introduce Authorization Extension |  | 1d? | 2008-07-17 | 2008-07-17 | 114 | 9d | 0d | Shannon Hastings [80%] | 6.4h |
| 116 | 7.3 | CSM Introduce Authorization Extension |  | 1d? | 2008-07-17 | 2008-07-17 | 114 | 9d | 0d | Shannon Hastings [80%] | 6.4h |
| 117 | 7.4 | ivy support for introduce-created projects |  | 1d? | 2008-07-17 | 2008-07-17 | 114 | 9d | 0d | Shannon Hastings [80%] | 6.4h |
| 118 | 7.5 | Terminology Metadata Service Extension |  | 1d? | 2008-07-17 | 2008-07-17 | 114 | 9d | 0d | Shannon Hastings [80%] | 6.4h |
| 119 | 7.6 | Need a way to hook in pre-deployment validation checks to enforce policy |  | 1d? | 2008-07-17 | 2008-07-17 | 114 | 9d | 0d | Shannon Hastings [80%] | 6.4h |
| 120 | 7.7 | Change the way schemas are loaded and resolved by introduce. |  | 1d? | 2008-07-17 | 2008-07-17 | 114 | 9d | 0d | Shannon Hastings [80%] | 6.4h |
| 121 | 7.8 | Introduce extension for creating cagrid core services |  | 1d? | 2008-07-17 | 2008-07-17 | 114 | 9d | 0d | Shannon Hastings [80%] | 6.4h |
| 122 | 7.9 | Introduce Software Update needs re-engineered |  | 1d? | 2008-07-17 | 2008-07-17 | 114 | 9d | 0d | Shannon Hastings [80%] | 6.4h |
| 123 | 7.10 | Improve Introduce usability when adding extensions or service contexts |  | 1d? | 2008-07-17 | 2008-07-17 | 114 | 9d | 0d | Shannon Hastings [80%] | 6.4h |
| 124 | 7.11 | Introduce services which support persistence are hard to customize persistence on the resource itself |  | 1d? | 2008-07-17 | 2008-07-17 | 114 | 9d | 0d | Shannon Hastings [80%] | 6.4h |
| 125 | 7.12 | Introduce client code should be more override friendly |  | 1d? | 2008-07-17 | 2008-07-17 | 114 | 9d | 0d | Shannon Hastings [80%] | 6.4h |
| 126 | 7.13 | Introduce clients do not set user credential when returning client handle to stateful resources |  | 1d? | 2008-07-17 | 2008-07-17 | 114 | 9d | 0d | Shannon Hastings [80%] | 6.4h |
| 127 | 7.14 | Introduce Service tab should use tooltips in the jtree |  | 1d? | 2008-07-17 | 2008-07-17 | 114 | 9d | 0d | Shannon Hastings [80%] | 6.4h |
| 128 | 7.15 | Introduce Feature Freeze (milestone) |  | 1d? | 2008-07-17 | 2008-07-17 | 114 | 3d | 0d | Shannon Hastings [80%] | 6.4h |
| 129 | 7.16 | Introduce Upgraders (1.1->1.3) |  | 1d? | 2008-07-17 | 2008-07-17 | 114 | 9d | 0d | Shannon Hastings [80%] | 6.4h |
| 130 | 7.17 | Introduce Upgraders (1.2->1.3) |  | 1d? | 2008-07-17 | 2008-07-17 | 114 | 9d | 0d | Shannon Hastings [80%] | 6.4h |
| 131 | 7.18 | Problem with Anonymous Security Setting |  | 1d? | 2008-07-17 | 2008-07-17 | 114 | 9d | 0d | Shannon Hastings [80%] | 6.4h |
| 132 | 7.19 | Finish | milestone | 0d | 2008-07-17 | 2008-07-17 | 120, 121, 122, 123, 124, 125, 126, 115, 117, 119, 118, 116, 127, 128, 129, 130, 131 | 9d | 0d |  |  |

Notes:
- 109: We should hold off on this until CQL2 (and therefore DCQL2) are rolled out, as this requires a language change and would affect backwards compatibility
- 117: This is of limitied utility without 5.5; which likely won't be done in 1.3 timeline
- 118: We will need to discuss the design of this, and whether it is appropriate to be included in caGrid (or developed/released externally)

| ID | WBS | Task | Type | Duration | Start | Finish | Predecessors | Complete | Remaining | Total slack | Free slack | Resources | Work | Actual work |
| --- | --- | --- | --- | --- | --- | --- | --- | --- | --- | --- | --- | --- | --- | --- |
| 133 | 8.0 | **Security** |  | 10d? | 2008-07-17 A | 2008-07-30 |  | 6% | 9.41d? | 0d |  |  | 108.8h | 6.4h |
| 134 | 8.1 | Start | milestone | 0d | 2008-07-17 | 2008-07-17 |  |  |  | 9d | 0d |  |  |  |
| 135 | 8.2 | Support multiple authentication profile |  | 1d? | 2008-07-17 | 2008-07-17 | 134 |  |  | 9d |  | Steve Langella [80%] | 6.4h |  |
| 136 | 8.3 | Authentication Profile Service Metadata |  | 1d? | 2008-07-17 | 2008-07-17 | 134 |  |  | 9d |  | Steve Langella [80%] | 6.4h |  |
| 137 | 8.4 | Update GAARDS UI to leverage new Authentication Profile / Trusted IdP metadata |  | 1d? | 2008-07-17 | 2008-07-17 | 134 |  |  | 9d |  | Steve Langella [80%] | 6.4h |  |
| 138 | 8.5 | Develop system integration tests for the Authentication Service |  | 1d? | 2008-07-17 A | 2008-07-17 A | 134 | 100% |  |  |  | Steve Langella [80%] | 6.4h | 6.4h |
| 139 | 8.6 | Develop system integration tests for the GTS |  | 1d? | 2008-07-18 | 2008-07-18 | 138 |  |  | 0d |  | Steve Langella [80%] | 6.4h |  |
| 140 | 8.7 | SyncGTS needs to use service property for sync description |  | 1d? | 2008-07-21 | 2008-07-21 | 139 |  |  | 0d |  | Steve Langella [80%] | 6.4h |  |
| 141 | 8.8 | API to discover trusted IDs (Use case for caB2B security requirements) |  | 1d? | 2008-07-22 | 2008-07-22 | 140 |  |  | 0d |  | Steve Langella [80%] | 6.4h |  |
| 142 | 8.9 | Service Security Client needs a way to say to always use credential |  | 1d? | 2008-07-23 | 2008-07-23 | 141 |  |  | 0d |  | Steve Langella [80%] | 6.4h |  |
| 143 | 8.10 | Spring enable Dorian |  | 1d? | 2008-07-24 | 2008-07-24 | 142 |  |  | 0d |  | Steve Langella [80%] | 6.4h |  |
| 144 | 8.11 | Implement new Authentication Service interface |  | 1d? | 2008-07-25 | 2008-07-25 | 143 |  |  | 0d |  | Steve Langella [80%] | 6.4h |  |
| 145 | 8.12 | Add Authentication Profile Metadata to Dorian. |  | 1d? | 2008-07-28 | 2008-07-28 | 144 |  |  | 0d |  | Steve Langella [80%] | 6.4h |  |
| 146 | 8.13 | Extend Trusted Identity Provider information to include information regarding the IdP's Authentication Service |  | 1d? | 2008-07-29 | 2008-07-29 | 145 |  |  | 0d |  | Steve Langella [80%] | 6.4h |  |
| 147 | 8.14 | Add Trusted IdP metadata to Dorian |  | 1d? | 2008-07-30 | 2008-07-30 | 146 |  |  | 0d |  | Steve Langella [80%] | 6.4h |  |
| 148 | 8.15 | Move from issuing Proxy Certificates to Issuing short term certificates. |  | 1d? | 2008-07-17 | 2008-07-17 | 134 |  |  | 9d |  | Steve Langella [80%] | 6.4h |  |
| 149 | 8.16 | Enable Dorian Host Certificates to work with new version of IE and Firefox |  | 1d? | 2008-07-17 | 2008-07-17 | 134 |  |  | 9d |  | Steve Langella [80%] | 6.4h |  |
| 150 | 8.17 | Add Account Audting to Dorian |  | 1d? | 2008-07-17 | 2008-07-17 | 134 |  |  | 9d |  | Steve Langella [80%] | 6.4h |  |
| 151 | 8.18 | Reformat GAARDS UI to display properly on the MAC |  | 1d? | 2008-07-17 | 2008-07-17 | 134 |  |  | 9d |  | Steve Langella [80%] | 6.4h |  |
| 152 | 8.19 | Finish | milestone | 0d | 2008-07-30 | 2008-07-30 | 135, 136, 137, 138, 139, 140, 141, 142, 143, 144, 145, 146, 147, 148, 149, 150, 151 |  |  | 0d |  |  |  |  |
| 153 | 9.0 | **Incubation** |  | 1d? | 2008-07-17 | 2008-07-17 |  |  |  | 9d |  |  | 6.4h |  |
| 154 | 9.1 | Start | milestone | 0d | 2008-07-17 | 2008-07-17 |  |  |  | 9d | 0d |  |  |  |
| 155 | 9.2 | WSRF.NET (support) |  | 1d? | 2008-07-17 | 2008-07-17 | 154 |  |  | 9d | 0d | Shannon Hastings [80%] | 6.4h |  |
| 156 | 9.0 | FInish | milestone | 0d | 2008-07-17 | 2008-07-17 | 155 |  |  | 10d |  |  |  |  |

| ID | WBS | Task | Type | Duration | Start | Finish | Predecessors | Total slack | Free slack | Resources | Work |
| --- | --- | --- | --- | --- | --- | --- | --- | --- | --- | --- | --- |
| 157 | 10.0 | **Documentation** |  | 4d? | 2008-07-17 | 2008-07-22 |  | 7d |  |  | 82.4h |
| 158 | 10.1 | Start | milestone | 0d | 2008-07-17 | 2008-07-17 |  | 7d | 0d |  |  |
| 159 | 10.2 | Update Administrator Guide |  | 1d? | 2008-07-17 | 2008-07-17 | 158 | 10d | 3d | Carolyn Klinger | 8h |
| 160 | 10.3 | Update Install Guide |  | 1d? | 2008-07-17 | 2008-07-17 | 158 | 10d | 3d | Carolyn Klinger | 8h |
| 161 | 10.4 | Update User Guide |  | 1d? | 2008-07-17 | 2008-07-17 | 158 | 7d | 0d | Carolyn Klinger | 8h |
| 162 | 10.5 | Update design documents |  | 1d? | 2008-07-18 | 2008-07-18 | 161 | 7d | 0d | Scott Oster [50%]; Steve Langella [80%]; Shannon Hastings [80%]; David Ervin [80%] | 23.2h |
| 163 | 10.6 | Update caGrid overview |  | 1d? | 2008-07-21 | 2008-07-21 | 162 | 7d | 0d | Scott Oster [50%]; John Eisenschmidt | 12h |
| 164 | 10.7 | Update wiki |  | 1d? | 2008-07-22 | 2008-07-22 | 163 | 7d | 0d | Scott Oster [50%]; Steve Langella [80%]; Shannon Hastings [80%]; David Ervin [80%] | 23.2h |
| 165 | 10.8 | Finish | milestone | 0d | 2008-07-22 | 2008-07-22 | 159, 160, 164 | 7d |  |  |  |
| 166 | 11.0 | **Quality Assurance** |  | 11d? | 2008-07-17 | 2008-07-31 |  | 0d |  |  | 96h |
| 167 | 11.1 | Start | milestone | 0d | 2008-07-17 | 2008-07-17 |  | 9d | 0d |  |  |
| 168 | 11.2 | Test GME |  | 1d? | 2008-07-18 | 2008-07-18 | 167, 13 | 9d |  | Quality Assurance | 8h |
| 169 | 11.3 | Test caDSR Replacement |  | 1d? | 2008-07-18 | 2008-07-18 | 167, 20 | 9d |  | Quality Assurance | 8h |
| 170 | 11.4 | Test WebSSO |  | 1d? | 2008-07-18 | 2008-07-18 | 167, 89 | 9d |  | Quality Assurance | 8h |
| 171 | 11.5 | Test release on new tech stack |  | 1d? | 2008-07-18 | 2008-07-18 | 167, 97 | 9d |  | Quality Assurance | 8h |
| 172 | 11.6 | Test Introduce |  | 1d? | 2008-07-18 | 2008-07-18 | 167, 132 | 9d |  | Quality Assurance | 8h |
| 173 | 11.7 | Test Security |  | 1d? | 2008-07-31 | 2008-07-31 | 167, 152 | 0d |  | Quality Assurance | 8h |
| 174 | 11.8 | Test WSRF.NET |  | 1d? | 2008-07-18 | 2008-07-18 | 167, 155 | 9d |  | Quality Assurance | 8h |
| 175 | 11.9 | Test Identifiers |  | 1d? | 2008-07-17 | 2008-07-17 | 167 | 10d |  | Quality Assurance | 8h |
| 176 | 11.10 | Test Metrics |  | 1d? | 2008-07-17 | 2008-07-17 | 167 | 10d |  | Quality Assurance | 8h |
| 177 | 11.11 | Test Data Services |  | 1d? | 2008-07-18 | 2008-07-18 | 167, 112 | 9d |  | Quality Assurance | 8h |
| 178 | 11.12 | Test caGrid 1.3 Grid Services |  | 1d? | 2008-07-21 | 2008-07-21 | 167, 190 | 7d | 0d | Quality Assurance | 8h |
| 179 | 11.13 | Test QA integration scenarios |  | 1d? | 2008-07-22 | 2008-07-22 | 178 | 7d | 0d | Quality Assurance | 8h |
| 180 | 11.14 | Finish | milestone | 0d | 2008-07-22 | 2008-07-22 | 179 | 7d |  | Quality Assurance |  |

| ID | WBS | Task | Type | Duration | Start | Finish | Predecessors | Total slack | Free slack | Resources | Work |
| --- | --- | --- | --- | --- | --- | --- | --- | --- | --- | --- | --- |
| 181 | 12.0 | **Deployment** |  | 4d? | 2008-07-17 | 2008-07-22 |  | 7d |  |  | 107.2h |
| 182 | 12.1 | Start | milestone | 0d | 2008-07-17 | 2008-07-17 |  | 7d | 0d |  |  |
| 183 | 12.2 | Create release notes |  | 1d? | 2008-07-17 | 2008-07-17 | 182 | 9d | 0d | Scott Oster [50%] | 4h |
| 184 | 12.3 | Create 1.3 target_grid configurations |  | 1d? | 2008-07-18 | 2008-07-18 | 183 | 9d |  | Scott Oster [50%] | 4h |
| 185 | 12.4 | **Create 1.3 release branch in CVS** |  | 1d? | 2008-07-17 | 2008-07-17 |  | 7d |  |  | 12h |
| 186 | 12.4.1 | Update project versions |  | 1d? | 2008-07-17 | 2008-07-17 | 182 | 7d | 0d | Scott Oster [50%] | 4h |
| 187 | 12.4.2 | update eclipse projects |  | 1d? | 2008-07-17 | 2008-07-17 | 182 | 10d |  | Scott Oster [50%] | 4h |
| 188 | 12.4.3 | remove any projects which wont be released in 1.3 |  | 1d? | 2008-07-17 | 2008-07-17 | 182 | 10d |  | Scott Oster [50%] | 4h |
| 189 | 12.5 | Update LICENSE |  | 1d? | 2008-07-17 | 2008-07-17 | 182 | 10d | 3d | John Eisenschmidt | 8h |
| 190 | 12.6 | Update core caGrid Services using Introduce 1.3 |  | 1d? | 2008-07-18 | 2008-07-18 | 128, 186 | 7d | 0d | Shannon Hastings [80%] | 6.4h |
| 191 | 12.7 | Validate core services' metadata |  | 1d? | 2008-07-17 | 2008-07-17 | 182 | 10d | 3d |  |  |
| 192 | 12.8 | publish release IVY repositories |  | 1d? | 2008-07-17 | 2008-07-17 | 182 | 10d | 3d |  |  |
| 193 | 12.9 | create installer release |  | 1d? | 2008-07-17 | 2008-07-17 | 182 | 10d | 3d |  |  |
| 194 | 12.10 | post installer properties file to FTP site |  | 1d? | 2008-07-17 | 2008-07-17 | 182 | 10d | 3d |  |  |
| 195 | 12.11 | create gforge release |  | 1d? | 2008-07-17 | 2008-07-17 | 182 | 10d | 3d | John Eisenschmidt | 8h |
| 196 | 12.12 | Write Deployment Instructions |  | 1d? | 2008-07-17 | 2008-07-17 | 182 | 10d | 3d | Steve Langella [80%] | 6.4h |
| 197 | 12.13 | Redeploy QA Grid |  | 1d? | 2008-07-17 | 2008-07-17 |  | 7d | 0d | Quality Assurance | 8h |
| 198 | 12.14 | Redeploy Training Grid |  | 1d? | 2008-07-17 | 2008-07-17 |  | 10d | 3d | Steve Langella [80%]; Scott Oster [50%] | 10.4h |
| 199 | 12.15 | Redeploy Staging Grid |  | 1d? | 2008-07-18 | 2008-07-18 | 197 | 7d | 0d | Systems | 8h |
| 200 | 12.16 | Redeploy Production Grid |  | 1d? | 2008-07-21 | 2008-07-21 | 199 | 7d | 0d | Systems | 8h |
| 201 | 12.17 | Update Zope / Plome |  | 1d? | 2008-07-17 | 2008-07-17 |  | 10d | 3d | John Eisenschmidt | 8h |
| 202 | 12.18 | Update gforge |  | 1d? | 2008-07-17 | 2008-07-17 |  | 10d | 3d | John Eisenschmidt | 8h |
| 203 | 12.19 | Send Release Announcement |  | 1d? | 2008-07-22 | 2008-07-22 | 200 | 7d | 0d | John Eisenschmidt | 8h |
| 204 | 12.20 | Finish | milestone | 0d | 2008-07-22 | 2008-07-22 | 190, 196, 197, 198, 199, 200, 201, 202, 203, 189, 191, 192, 193, 194, 195 | 7d |  |  |  |

Notes:
- 198: In the past, we have deployed the training grid before other tiers, as we develop the deployment process document in doing so
